# Elserag Project Plan

How a schedule from MS Project changed from version to version. A marks actual dates.

## Version 1 (saved 2024-01-29)

Note of the change: Finished Project Plan for Elserag Part 1, and Create Part 1 Reports with images

| ID | WBS | Task | Duration | Start | Finish | Predecessors | Complete | Total float | Constraint |
| --- | --- | --- | --- | --- | --- | --- | --- | --- | --- |
| 1 | 1 | **Part 1: Documentation and Design** | 55d | 2023-11-01 A | 2024-01-16 A |  | 100% |  |  |
| 2 | 1.1 | **Gathering Information** | 25d | 2023-11-01 A | 2023-12-05 A |  | 100% |  |  |
| 3 |  | Research on Disabilities in general | 2w | 2023-11-01 A | 2023-11-14 A |  | 100% |  |  |
| 4 |  | Research on Blindness Disabilitiey | 2w | 2023-11-15 A | 2023-11-28 A | 3 | 100% |  |  |
| 5 | 1.1.3 | **Getting information from Specialized People** | 5d | 2023-11-29 A | 2023-12-05 A | 4 | 100% |  |  |
| 6 |  | Elnour School for Blind People | 1w | 2023-11-29 A | 2023-12-05 A |  | 100% |  |  |
| 7 |  | Elnour and Elamal School | 1w | 2023-11-29 A | 2023-12-05 A |  | 100% |  |  |
| 8 |  | Deliver Gathering Information Report | 0d | 2023-12-05 A | 2023-12-05 A | 2 | 100% |  |  |
| 9 | 1.3 | **Planning** | 10d | 2023-12-06 A | 2023-12-19 A | 8 | 100% |  |  |
| 10 |  | Define the Project Scope and Objectives | 2w | 2023-12-06 A | 2023-12-19 A |  | 100% |  |  |
| 11 |  | Develop the Project Plan | 2w | 2023-12-06 A | 2023-12-19 A |  | 100% |  |  |
| 12 |  | Deliver Planning Report | 0d | 2023-12-19 A | 2023-12-19 A | 9 | 100% |  |  |
| 13 |  | Define the Team Skills | 1w | 2023-12-20 A | 2023-12-26 A | 9 | 100% |  |  |
| 14 |  | Deliver Team Skills Report | 0d | 2023-12-26 A | 2023-12-26 A | 13 | 100% |  |  |
| 15 | 1.7 | **Define Requirements** | 5d | 2023-12-27 A | 2024-01-02 A | 14 | 100% |  |  |
| 16 |  | User Requirements | 1w | 2023-12-27 A | 2024-01-02 A | 14 | 100% |  |  |
| 17 |  | Domain Requirements | 1w | 2023-12-27 A | 2024-01-02 A | 14 | 100% |  |  |
| 18 |  | Non-Functional Requirements | 1w | 2023-12-27 A | 2024-01-02 A | 14 | 100% |  |  |
| 19 |  | Deliver the Requirements Report | 0d | 2024-01-02 A | 2024-01-02 A | 15 | 100% |  |  |
| 20 | 1.9 | **Design and Prototyping** | 10d | 2024-01-03 A | 2024-01-16 A | 19 | 100% |  |  |
| 21 |  | Design the UML for the Platform | 10d | 2024-01-03 A | 2024-01-16 A | 19 | 100% |  |  |
| 22 |  | Create intial design prototypes | 10d | 2024-01-03 A | 2024-01-16 A | 19 | 100% |  |  |
| 23 |  | Seek feedback from the Target Audience | 10d | 2024-01-03 A | 2024-01-16 A | 19 | 100% |  |  |
| 24 |  | Deliver the Design Report | 0d | 2024-01-16 A | 2024-01-16 A | 20 | 100% |  |  |
| 25 |  | Deliver and Make Discussion for Part 1 Documentation and Design | 1d | 2024-01-21 A | 2024-01-21 A | 1 | 100% |  | start no earlier than 2024-01-21 |
| 26 |  | Part 2: Implementation and Documentation | 1d? | 2024-02-01 | 2024-02-01 |  |  | 0d | start no earlier than 2024-02-01 |

## Version 2 (saved 2024-02-03)

Note of the change: Weekly Tasks Update in the Project Plan

Last finish 2024-02-01 → 2024-02-07 (+6d).

Added:

| ID | Task | Duration | Start | Finish | Resources |
| --- | --- | --- | --- | --- | --- |
| 27 | **Front End Development** | 5d | 2024-02-01 | 2024-02-07 |  |
| 28 | Front End Phase 1 | 1w | 2024-02-01 | 2024-02-07 | Amina Younis Mohamed; Manar Hussein Mohamed; Norhan Nageh Alabd |
| 29 | **Back End Development** | 5d | 2024-02-01 | 2024-02-07 |  |
| 30 | Back End Phase 1 | 1w | 2024-02-01 | 2024-02-07 | Omar Mohamed Elhassan; Sara Nabil Kamel |
| 31 | Management the Particpation in Hackathon | 1d? | 2024-02-01 | 2024-02-01 | Mohamed AbdElrahman Elkhlawy |

Changed:

| ID | Task | Start | Finish | Duration | Total float | Other |
| --- | --- | --- | --- | --- | --- | --- |
| 1 | **Part 1: Documentation and Design** |  | 2024-01-16 A → 2024-01-17 A (+1d) |  |  |  |
| 8 | Deliver Gathering Information Report | 2023-12-05 A → 2023-12-06 A (+1d) | 2023-12-05 A → 2023-12-06 A (+1d) |  |  |  |
| 12 | Deliver Planning Report | 2023-12-19 A → 2023-12-20 A (+1d) | 2023-12-19 A → 2023-12-20 A (+1d) |  |  |  |
| 14 | Deliver Team Skills Report | 2023-12-26 A → 2023-12-27 A (+1d) | 2023-12-26 A → 2023-12-27 A (+1d) |  |  |  |
| 19 | Deliver the Requirements Report | 2024-01-02 A → 2024-01-03 A (+1d) | 2024-01-02 A → 2024-01-03 A (+1d) |  |  |  |
| 24 | Deliver the Design Report | 2024-01-16 A → 2024-01-17 A (+1d) | 2024-01-16 A → 2024-01-17 A (+1d) |  |  |  |
| 26 | **Part 2: Implementation and Documentation** |  | 2024-02-01 → 2024-02-07 (+6d) | 1d? → 5d | 0d → none | constraint start no earlier than 2024-02-01 → none; resources none → Elserag Team |

## Version 3 (saved 2024-02-03)

Note of the change: Update in the Front End and Back End Phase 1 Durations

Last finish 2024-02-07 → 2024-02-06 (-1d).

Changed:

| ID | Task | Finish | Duration | Total float | Other |
| --- | --- | --- | --- | --- | --- |
| 26 | **Part 2: Implementation and Documentation** | 2024-02-07 → 2024-02-06 (-1d) |  |  |  |
| 27 | **Front End Development** | 2024-02-07 → 2024-02-04 (-3d) | 5d → 3d | 0d → 2d |  |
| 28 | Front End Phase 1 | 2024-02-07 → 2024-02-04 (-3d) | 1w → 3d | 0d → 2d | constraint none → finish no earlier than 2024-02-04 |
| 29 | **Back End Development** | 2024-02-07 → 2024-02-04 (-3d) | 5d → 3d | 0d → 2d |  |
| 30 | Back End Phase 1 | 2024-02-07 → 2024-02-04 (-3d) | 1w → 3d | 0d → 2d | constraint none → finish no earlier than 2024-02-04 |

## Version 4 (saved 2024-03-16)

Note of the change: First Commit in The Second Part of Elserag

Last finish 2024-02-06 → 2024-03-12 (+35d). Complete tasks 19 → 31.

Added:

| ID | Task | Duration | Start | Finish | Predecessors | Constraint |
| --- | --- | --- | --- | --- | --- | --- |
| 29 | Front End Phase 2 | 1w | 2024-02-05 A | 2024-02-09 A | 28 |  |
| 30 | Front End Phase 3 | 1w | 2024-02-12 A | 2024-02-16 A | 29 |  |
| 31 | Front End Phase 4 | 1w | 2024-02-19 A | 2024-02-23 A | 30 |  |
| 32 | Front End Phase 5 | 1w | 2024-02-26 A | 2024-03-01 A | 31 |  |
| 33 | Front End Phase 6 | 1w | 2024-03-04 A | 2024-03-08 A | 32 |  |
| 36 | Back End Phase 2 | 1w | 2024-02-07 A | 2024-02-13 A | 35 | finish no earlier than 2024-02-04 |
| 37 | Back End Phase 3 | 1w | 2024-02-14 A | 2024-02-20 A | 36 | finish no earlier than 2024-02-04 |
| 38 | Back End Phase 4 | 1w | 2024-02-21 A | 2024-02-27 A | 37 | finish no earlier than 2024-02-04 |
| 39 | Back End Phase 5 | 1w | 2024-02-28 A | 2024-03-05 A | 38 | finish no earlier than 2024-02-04 |
| 40 | Back End Phase 6 | 1w | 2024-03-06 A | 2024-03-12 A | 39 | finish no earlier than 2024-02-04 |

Changed:

| ID | Task | Start | Finish | Duration | Complete | Total float | Other |
| --- | --- | --- | --- | --- | --- | --- | --- |
| 26 | **Part 2: Implementation and Documentation** | 2024-02-01 → 2024-01-30 A (-2d) | 2024-02-06 → 2024-03-12 (+35d) | 5d → 32d | 0% → 86% | none → 0d |  |
| 27 | **Front End Development** | 2024-02-01 → 2024-01-30 A (-2d) | 2024-02-04 → 2024-03-08 A (+33d) | 3d → 30d | 0% → 100% | 2d → none | resources none → Front End Team |
| 28 | Front End Phase 1 | 2024-02-01 → 2024-01-30 A (-2d) | 2024-02-04 A | 3d → 1w | 0% → 100% | 2d → none | resources Amina Younis Mohamed; Manar Hussein Mohamed; Norhan Nageh Alabd → none |
| 34 | **Back End Development** | 2024-02-01 A | 2024-02-04 → 2024-03-12 A (+37d) | 3d → 30d | 0% → 100% | 2d → none | resources none → Back End Team |
| 35 | Back End Phase 1 | 2024-02-01 A | 2024-02-04 → 2024-02-06 A (+2d) | 3d → 1w | 0% → 100% | 2d → none | constraint finish no earlier than 2024-02-04 → start no earlier than 2024-02-01; resources Omar Mohamed Elhassan; Sara Nabil Kamel → none |
| 41 | Management the Particpation in Hackathon |  | 2024-02-01 → 2024-02-13 (+12d) | 1d? → 10d |  | 4d → 20d | constraint none → start no earlier than 2024-02-01 |

## Version 5 (saved 2024-06-22)

Note of the change: Finished Project Plan on Microsoft Project and Added Part 2 Reports Folder

Last finish 2024-03-12 → 2024-06-23 (+103d). Complete tasks 31 → 43.

Added:

| ID | Task | Duration | Start | Finish | Predecessors | Constraint | Resources |
| --- | --- | --- | --- | --- | --- | --- | --- |
| 34 | Front End Phase 7 | 1w | 2024-03-09 A | 2024-03-15 A | 33 |  |  |
| 35 | Front End Phase 8 | 1w | 2024-03-16 A | 2024-03-22 A | 34 |  |  |
| 36 | Front End Phase 9 | 1w | 2024-03-23 A | 2024-03-29 A | 35 |  |  |
| 37 | Front End Phase 10 | 1w | 2024-03-30 A | 2024-04-05 A | 36 |  |  |
| 38 | Deliver Front End Report | 0d | 2024-04-05 A | 2024-04-05 A | 27 |  | Elserag Team |
| 46 | Deliver Back End Report | 0d | 2024-05-17 A | 2024-05-17 A | 39 |  | Elserag Team |
| 48 | Deliver Participation in Hackathon Report | 0d | 2024-02-13 A | 2024-02-13 A | 47 |  | Elserag Team |
| 49 | Integration Between Front End and Back End | 1mo | 2024-05-20 A | 2024-06-14 A | 39 |  | Back End Team; Front End Team |
| 50 | Deliver Application Integration Report | 0d | 2024-06-14 A | 2024-06-14 A | 49 |  | Elserag Team |
| 51 | Elserag Testing | 1w | 2024-06-17 A | 2024-06-21 A | 49 |  | Elserag Team |
| 52 | Deliver Elserag Testing Report | 0d | 2024-06-21 A | 2024-06-21 A | 51 |  | Elserag Team |
| 53 | Deliver and Make Discussion for Part 2 Implementation and Documentation | 1d | 2024-06-23 | 2024-06-23 | 26 | start no earlier than 2024-06-23 | Elserag Team |

Changed:

| ID | Task | Start | Finish | Duration | Complete | Total float | Predecessors |
| --- | --- | --- | --- | --- | --- | --- | --- |
| 26 | **Part 2: Implementation and Documentation** |  | 2024-03-12 → 2024-06-21 A (+101d) | 32d → 105d | 86% → 100% | 0d → none |  |
| 27 | **Front End Development** |  | 2024-03-08 A → 2024-04-05 A (+28d) | 30d → 50d |  |  |  |
| 39 | **Back End Development** | 2024-02-01 A → 2024-04-06 A (+65d) | 2024-03-12 A → 2024-05-17 A (+66d) |  |  |  |  |
| 40 | Back End Phase 1 | 2024-02-01 A → 2024-04-06 A (+65d) | 2024-02-06 A → 2024-04-12 A (+66d) |  |  |  | none → 37 |
| 41 | Back End Phase 2 | 2024-02-07 A → 2024-04-13 A (+66d) | 2024-02-13 A → 2024-04-19 A (+66d) |  |  |  |  |
| 42 | Back End Phase 3 | 2024-02-14 A → 2024-04-21 A (+67d) | 2024-02-20 A → 2024-04-26 A (+66d) |  |  |  |  |
| 43 | Back End Phase 4 | 2024-02-21 A → 2024-04-27 A (+66d) | 2024-02-27 A → 2024-05-03 A (+66d) |  |  |  |  |
| 44 | Back End Phase 5 | 2024-02-28 A → 2024-05-04 A (+66d) | 2024-03-05 A → 2024-05-10 A (+66d) |  |  |  |  |
| 45 | Back End Phase 6 | 2024-03-06 A → 2024-05-11 A (+66d) | 2024-03-12 A → 2024-05-17 A (+66d) |  |  |  |  |
| 47 | Management the Particpation in Hackathon | 2024-02-01 A | 2024-02-13 A |  | 0% → 100% | 20d → none |  |

## Version 6 (saved 2024-06-28)

Note of the change: Added the Application file, and Finished the Project Plan

Last finish stays 2024-06-23. Complete tasks 43 → 44.

Changed:

| ID | Task | Start | Finish | Complete | Total float |
| --- | --- | --- | --- | --- | --- |
| 53 | Deliver and Make Discussion for Part 2 Implementation and Documentation | 2024-06-23 A | 2024-06-23 A | 0% → 100% | 0d → none |
